# 项目计划

Schedule from MS Project, 2017-03-10 to 2017-06-16, A marks actual dates.

## Calendars

- 标准: Mon-Fri 08:00-12:00, 13:00-17:00; Sat-Sun off.

## Resources

| Resource |
| --- |
| 蒋波 |
| 王文茹 |
| 卢兴海 |

## Schedule

| ID | WBS | Task | Type | Duration | Start | Finish | Predecessors | Complete | Actual start | Actual finish | Baseline start | Baseline finish | Baseline duration | Resources | Work | Actual work |
| --- | --- | --- | --- | --- | --- | --- | --- | --- | --- | --- | --- | --- | --- | --- | --- | --- |
| 1 | 1 | **小组成立及项目选择** |  | 6d | 2017-03-10 A | 2017-03-17 A |  | 100% |  |  | 2017-03-10 | 2017-03-17 | 7d |  | 122.08h | 122.08h |
| 2 | 1.1 | 小组人员确立 | manual | 0.08d | 2017-03-10 A | 2017-03-10 A |  | 100% |  |  | 2017-03-10 | 2017-03-10 | 1d | 蒋波 [4%]; 卢兴海 [4%]; 王文茹 [4%] | 1h | 1h |
| 3 | 1.2 | 查阅相关资料 | manual | 1d | 2017-03-11 A | 2017-03-13 A | 2 | 100% |  |  | 2017-03-11 | 2017-03-13 | 3d | 蒋波 [25%]; 卢兴海 [25%]; 王文茹 [25%] | 21h | 21h |
| 4 | 1.3 | 确定项目及研究方向 | manual | 0.17d | 2017-03-14 A | 2017-03-14 A | 3 | 100% |  |  | 2017-03-14 | 2017-03-14 | 1d | 蒋波 [17%]; 卢兴海 [17%]; 王文茹 [17%] | 4.08h | 4.08h |
| 5 | 1.4 | 召开组会小组成员分工 | manual | 4d | 2017-03-14 A | 2017-03-14 A | 4 | 100% |  |  | 2017-03-14 | 2017-03-14 | 1d | 蒋波 [8%]; 卢兴海 [8%]; 王文茹 [8%] | 24h | 24h |
| 6 | 1.5 | 编写项目计划书 | manual | 3d | 2017-03-15 A | 2017-03-17 A | 5 | 100% |  |  | 2017-03-15 | 2017-03-17 | 3d | 卢兴海 [33%] | 24h | 24h |
| 7 | 1.6 | 编写项目介绍及ppt | manual | 3d | 2017-03-15 A | 2017-03-17 A | 5 | 100% |  |  | 2017-03-15 | 2017-03-17 | 3d | 王文茹 [33%] | 24h | 24h |
| 8 | 1.7 | 课堂展示与讨论 | manual | 1d | 2017-03-17 A | 2017-03-17 A | 6, 7 | 100% |  |  | 2017-03-17 | 2017-03-17 | 1d | 蒋波 [4%]; 卢兴海 [4%]; 王文茹 [4%] | 24h | 24h |
| 9 | 2 | **项目软件需求分析** |  | 6d | 2017-03-18 A | 2017-03-24 |  | 100% |  | 2017-03-31 | 2017-03-18 | 2017-03-24 | 14d |  | 56.4h | 56.4h |
| 10 | 2.1 | 对FG两组进行评审 | manual | 2d | 2017-03-18 A | 2017-03-19 A |  | 100% |  |  | 2017-03-18 | 2017-03-19 | 2d | 蒋波 [13%]; 卢兴海 [13%]; 王文茹 [13%] | 6.24h | 6.24h |
| 11 | 2.2 | 汇总别组对我组提出的问题 | manual | 1d | 2017-03-20 A | 2017-03-20 A |  | 100% |  |  | 2017-03-20 | 2017-03-20 | 1d | 王文茹 [25%] | 2h | 2h |
| 12 | 2.3 | 小组开会讨论并分析问题 | manual | 1d | 2017-03-20 A | 2017-03-20 A |  | 100% |  |  | 2017-03-20 | 2017-03-20 | 1d | 蒋波 [25%]; 卢兴海 [25%]; 王文茹 [25%] | 3.12h | 3.12h |
| 13 | 2.4 | 项目说明修改 | manual | 3d | 2017-03-21 A | 2017-03-23 A |  | 100% |  |  | 2017-03-21 | 2017-03-23 | 3d | 卢兴海 [25%] | 6h | 6h |
| 14 | 2.5 | 项目计划修改 | manual | 3d | 2017-03-21 A | 2017-03-23 A |  | 100% |  |  | 2017-03-21 | 2017-03-23 | 3d | 蒋波 [25%] | 6h | 6h |
| 15 | 2.6 | 编写项目说明ppt | manual | 3d | 2017-03-21 A | 2017-03-23 A |  | 100% |  |  | 2017-03-21 | 2017-03-23 | 3d | 王文茹 [25%] | 6h | 6h |
| 16 | 2.7 | 小组开会讨论需求规格说明书的编写 | manual | 1d | 2017-03-26 A | 2017-03-26 A |  | 100% |  |  | 2017-03-26 | 2017-03-26 | 1d | 蒋波 [25%]; 卢兴海 [25%]; 王文茹 [25%] | 6h | 6h |
| 17 | 2.8 | 编写需求规格说明书 | manual | 2d | 2017-03-27 A | 2017-03-28 A |  | 100% |  |  | 2017-03-27 | 2017-03-28 | 2d | 蒋波 [25%]; 卢兴海 [25%] | 8h | 8h |
| 18 | 2.9 | 评价FG组需求规格说明书 | manual | 1d | 2017-03-29 A | 2017-03-29 A |  | 100% |  |  | 2017-03-29 | 2017-03-29 | 1d | 蒋波 [25%]; 卢兴海 [25%]; 王文茹 [25%] | 6h | 6h |
| 19 | 2.10 | 汇总问题清单 | manual | 1d | 2017-03-29 A | 2017-03-29 A |  | 100% |  |  | 2017-03-29 | 2017-03-29 | 1d | 王文茹 [25%] | 2h | 2h |
| 20 | 2.11 | 根据评审修改需求规格说明书 | manual | 1d | 2017-03-30 A | 2017-03-30 A |  | 100% |  |  | 2017-03-30 | 2017-03-30 | 1d | 蒋波 [19%]; 卢兴海 [19%] | 3.04h | 3.04h |
| 21 | 2.12 | 编写汇报ppt 包括需求说明 修改说明 评审说明 | manual | 1d | 2017-03-31 A | 2017-03-31 A |  | 100% |  |  | 2017-03-31 | 2017-03-31 | 1d | 王文茹 [25%] | 2h | 2h |
| 22 | 3 | **软件需求评审** |  | 6d | 2017-03-25 | 2017-03-31 |  | 100% | 2017-04-01 | 2017-04-07 | 2017-03-25 | 2017-03-31 | 7d |  | 14.24h | 14.24h |
| 23 | 3.1 | 开小组会议讨论需求说明书如何修改 | manual | 1d | 2017-04-01 A | 2017-04-01 A |  | 100% |  |  | 2017-04-01 | 2017-04-01 | 1d | 蒋波 [13%]; 卢兴海 [13%]; 王文茹 [13%] | 3.12h | 3.12h |
| 24 | 3.2 | 修改需求说明书 | manual | 2d | 2017-04-05 A | 2017-04-06 A |  | 100% |  |  | 2017-04-05 | 2017-04-06 | 2d | 蒋波 [19%]; 卢兴海 [19%]; 王文茹 [19%] | 9.12h | 9.12h |
| 25 | 3.3 | 编写汇报ppt | manual | 1d | 2017-04-07 A | 2017-04-07 A |  | 100% |  |  | 2017-04-07 | 2017-04-07 | 1d | 蒋波 [25%] | 2h | 2h |

| ID | WBS | Task | Type | Duration | Start | Finish | Complete | Actual start | Actual finish | Baseline start | Baseline finish | Baseline duration | Resources | Work | Actual work |
| --- | --- | --- | --- | --- | --- | --- | --- | --- | --- | --- | --- | --- | --- | --- | --- |
| 26 | 4 | **软件需求复评审** |  | 6d | 2017-04-01 | 2017-04-07 | 100% | 2017-04-10 | 2017-04-21 | 2017-04-01 | 2017-04-07 |  |  | 11.2h | 11.2h |
| 27 | 4.1 | 汇总问题清单 | manual | 1d | 2017-04-10 A | 2017-04-10 A | 100% |  |  | 2017-04-10 | 2017-04-10 | 1d | 王文茹 [25%] | 2h | 2h |
| 28 | 4.2 | 讨论评审内容并提出解决方案 | manual | 1d | 2017-04-16 A | 2017-04-16 A | 100% |  |  | 2017-04-16 | 2017-04-16 | 1d | 蒋波 [10%]; 卢兴海 [10%]; 王文茹 [10%] | 2.4h | 2.4h |
| 29 | 4.3 | 修改需求说明书v1.3 | manual | 3d | 2017-04-19 A | 2017-04-21 A | 100% |  |  | 2017-04-19 | 2017-04-21 | 3d | 卢兴海 [20%] | 4.8h | 4.8h |
| 30 | 4.4 | 制作展示ppt | manual | 1d | 2017-04-21 A | 2017-04-21 A | 100% |  |  | 2017-04-21 | 2017-04-21 | 1d | 蒋波 [25%] | 2h | 2h |
| 31 | 5 | **实验6：项目管理** |  | 6d | 2017-04-08 | 2017-04-14 | 100% | 2017-03-15 | 2017-04-21 | 2017-03-10 | 2017-04-14 |  |  | 25.52h | 25.52h |
| 32 | 5.1 | 编写项目计划v1版本 | manual | 3d | 2017-03-15 A | 2017-03-17 A | 100% |  |  | 2017-03-15 | 2017-03-17 | 3d | 蒋波 [33%] | 7.92h | 7.92h |
| 33 | 5.2 | 更新项目计划v2 | manual | 1d | 2017-04-07 A | 2017-04-07 A | 100% |  |  | 2017-04-07 | 2017-04-07 | 1d | 卢兴海 [25%] | 2h | 2h |
| 34 | 5.3 | 更新项目计划v3 | manual | 3d | 2017-04-11 A | 2017-04-13 A | 100% |  |  | 2017-04-11 | 2017-04-13 | 3d | 蒋波 [25%] | 6h | 6h |
| 35 | 5.4 | 记录工作日志 | manual | 1d | 2017-04-10 A | 2017-04-10 A | 100% |  |  | 2017-04-10 | 2017-04-10 | 1d | 蒋波 [13%]; 卢兴海 [13%]; 王文茹 [13%] | 3.12h | 3.12h |
| 36 | 5.5 | 整理讨论课堂上老师提出的问题 | manual | 1d | 2017-04-16 A | 2017-04-16 A | 100% |  |  | 2017-04-16 | 2017-04-16 | 1d | 蒋波 [9%]; 卢兴海 [9%]; 王文茹 [9%] | 2.16h | 2.16h |
| 37 | 5.6 | 更新项目计划v4 | manual | 2d | 2017-04-18 A | 2017-04-19 A | 100% |  |  | 2017-04-18 | 2017-04-18 | 2d | 蒋波 [19%] | 3.04h | 3.04h |
| 38 | 5.7 | 记录本周工作日志 | manual | 1d | 2017-04-21 A | 2017-04-21 A | 100% |  |  | 2017-04-21 | 2017-04-21 | 1d | 蒋波 [5%]; 卢兴海 [5%]; 王文茹 [6%] | 1.28h | 1.28h |
| 39 | 6 | **实验7：配置管理** |  | 6d | 2017-04-11 A | 2017-04-18 A | 100% |  |  | 2017-03-10 |  |  |  | 8.56h | 8.56h |
| 40 | 6.1 | 编写配置管理分析报告 | manual | 3d | 2017-04-11 A | 2017-04-13 A | 100% |  |  | 2017-04-11 | 2017-04-13 | 3d | 卢兴海 [25%] | 6h | 6h |
| 41 | 6.2 | 会议讨论配置管理需要的文档 | manual | 1d | 2017-04-15 A | 2017-04-15 A | 100% |  |  | 2017-04-15 | 2017-04-15 | 1d | 蒋波 [4%]; 卢兴海 [4%]; 王文茹 [4%] | 0.96h | 0.96h |
| 42 | 6.3 | 编写配置管理文档 | manual | 2d | 2017-04-17 A | 2017-04-18 A | 100% |  |  | 2017-04-17 | 2017-04-18 | 2d | 卢兴海 [10%] | 1.6h | 1.6h |
| 43 | 7 | **实验8：统计分析** |  | 8d | 2017-04-11 A | 2017-04-20 A | 100% |  |  | 2017-03-10 |  |  |  | 17.76h | 17.76h |
| 44 | 7.1 | 编写工作量统计表 | manual | 3d | 2017-04-11 A | 2017-04-13 A | 100% |  |  | 2017-04-11 | 2017-04-13 | 3d | 王文茹 [25%] | 6h | 6h |
| 45 | 7.2 | 开会讨论本周实验8工作内容与工作计划 | manual | 1d | 2017-04-15 A | 2017-04-15 A | 100% |  |  | 2017-04-15 | 2017-04-15 | 1d | 蒋波 [13%]; 卢兴海 [13%]; 王文茹 [13%] | 3.12h | 3.12h |
| 46 | 7.3 | 更新工作量统计表 | manual | 2d | 2017-04-16 A | 2017-04-17 A | 100% |  |  | 2017-04-16 | 2017-04-17 | 2d | 王文茹 [9%] | 1.44h | 1.44h |
| 47 | 7.4 | 编写工作统计分析报告 | manual | 3d | 2017-04-18 A | 2017-04-20 A | 100% |  |  | 2017-04-18 | 2017-04-20 | 3d | 王文茹 [30%] | 7.2h | 7.2h |
| 48 | 8 | 软件产品改进与展示：方案设计 | manual | 6d | 2017-04-15 | 2017-04-21 |  |  |  | 2017-04-15 | 2017-04-21 |  |  |  |  |
| 49 | 9 | 软件产品改进与展示：设计与实现进展报告1 | manual | 6d | 2017-04-22 | 2017-04-28 |  |  |  | 2017-04-22 | 2017-04-28 |  |  |  |  |
| 50 | 10 | 软件产品改进与展示：设计与实现进展报告2 | manual | 6d | 2017-04-29 | 2017-05-05 |  |  |  | 2017-04-29 | 2017-05-05 |  |  |  |  |
| 51 | 11 | 软件测试分析 | manual | 6d | 2017-05-06 | 2017-05-12 |  |  |  | 2017-05-06 | 2017-05-12 |  |  |  |  |
| 52 | 12 | 软件测试评审 | manual | 6d | 2017-05-13 | 2017-05-19 |  |  |  | 2017-05-13 | 2017-05-19 |  |  |  |  |
| 53 | 13 | 软件测试复评审 | manual | 6d | 2017-05-20 | 2017-05-26 |  |  |  | 2017-05-20 | 2017-05-26 |  |  |  |  |
| 54 | 14 | 软件演示与测评 | manual | 6d | 2017-05-27 | 2017-06-02 |  |  |  | 2017-05-27 | 2017-06-02 |  |  |  |  |
| 55 | 15 | 综合实验分析与总结 | manual | 6d | 2017-06-10 | 2017-06-16 |  |  |  | 2017-06-10 | 2017-06-16 |  |  |  |  |
